Schedule from OmniPlan.
Project start 2016-01-27

## Resources

| Resource | Group |
| --- | --- |
| Resource 1 | staff |
| Equipment 1 | equipment |
| Material 1 | material |
| Group 1 | group |
| 黄玉辉 | staff |
| 李世杰 | staff |

## Schedule

| ID | WBS | Task | Work |
| --- | --- | --- | --- |
| 1 | 1 | **UIUX Framework** |  |
| 2 | 1.1 | TabBarController | 8h |
| 3 | 1.2 | NavigationController | 8h |
| 4 | 2 | **直播广场** |  |
| 5 | 2.1 | 直播广场（主界面） | 8h |
| 6 | 2.2 | 好友直播 | 8h |
| 7 | 2.3 | 热门直播 | 8h |
| 8 | 2.4 | **最新直播** |  |
| 9 | 2.4.1 | 最新直播（主界面） | 8h |
| 10 | 2.4.2 | 达人推荐 | 8h |
| 11 | 3 | **我的主页** |  |
| 12 | 3.1 | 我的主页（主界面） | 8h |
| 13 | 3.2 | 我的直播 | 8h |
| 14 | 3.3 | 我的关注 | 8h |
| 15 | 3.4 | 我的粉丝 | 8h |
| 16 | 3.5 | **私信** |  |
| 17 | 3.5.1 | 私信（主界面） | 8h |
| 18 | 3.5.2 | 未关注人消息 | 8h |
| 19 | 3.6 | **编辑资料** |  |
| 20 | 3.6.1 | 编辑资料（主界面） | 8h |
| 21 | 3.6.2 | 选择头像 | 8h |
| 22 | 3.6.3 | 编辑昵称 | 8h |
| 23 | 3.6.4 | 选择性别 | 8h |
| 24 | 3.6.5 | 编辑个性签名 | 8h |

| ID | WBS | Task | Work |
| --- | --- | --- | --- |
| 25 | 3.7 | **我的收益** |  |
| 26 | 3.7.1 | 我的收益（主界面） | 8h |
| 27 | 3.7.2 | 兑换界面 | 8h |
| 28 | 3.7.3 | 微信提现 | 8h |
| 29 | 3.7.4 | 提现记录 | 8h |
| 30 | 3.8 | 我的等级 | 8h |
| 31 | 3.9 | 我的钻石 | 8h |
| 32 | 3.10 | **设置** |  |
| 33 | 3.10.1 | 设置（主界面） | 8h |
| 34 | 3.10.2 | 黑名单 | 8h |
| 35 | 3.10.3 | 推送管理 | 8h |
| 36 | 3.10.4 | 关于映客 | 8h |
| 37 | 3.10.5 | 用户反馈 | 8h |
| 38 | 4 | **TA的主页** |  |
| 39 | 4.1 | TA的主页（主界面） | 8h |
| 40 | 4.2 | TA的直播 | 8h |
| 41 | 4.3 | TA的关注 | 8h |
| 42 | 4.4 | TA的粉丝 | 8h |
| 43 | 5 | **视频直播** |  |
| 44 | 5.1 | 视频层 | 8h |
| 45 | 5.2 | **信息层** |  |
| 46 | 5.2.1 | 观众列表 | 8h |
| 47 | 5.2.2 | 观众信息 | 8h |
| 48 | 5.2.3 | 消息流 | 8h |
| 49 | 5.2.4 | 弹幕流 | 8h |
| 50 | 5.2.5 | 礼物流 | 8h |
| 51 | 5.2.6 | 消息发送 | 8h |
| 52 | 5.2.7 | 礼物发送 | 8h |
| 53 | 5.2.8 | 社交分享 | 8h |

| ID | WBS | Task | Work |
| --- | --- | --- | --- |
| 54 | 6 | **视频录制** |  |
| 55 | 6.1 | 直播信息 | 8h |
| 56 | 6.2 | 视频录制 | 8h |
| 57 | 7 | **登录** |  |
| 58 | 7.1 | 登录（主界面） | 8h |
| 59 | 7.2 | 好友推荐 | 8h |
| 60 | 8 | **公共界面** |  |
| 61 | 8.1 | 聊天界面 | 8h |
| 62 | 8.2 | 搜索界面 | 8h |
| 63 | 8.3 | 映票贡献榜 | 8h |
| 64 | 8.4 | 网页浏览 | 8h |
